# 20170427.proy2017g407.v4

Schedule from MS Project, 2017-03-16 to 2017-10-26, costs in $, A marks actual dates.

## Calendars

- Standard: Mon-Fri 08:00-12:00, 13:00-17:00; Sat-Sun off.

## Resources

| Resource | Rate |
| --- | --- |
| L. Alegre |  |
| D.Ruda |  |
| M.Nelson |  |
| PM | 1000 |
| AF | 830 |
| ARQ | 930 |
| DBA | 830 |
| ACA | 660 |
| PR | 760 |
| LA |  |
| LP |  |

## Schedule

| ID | WBS | Task | Type | Duration | Start | Finish | Predecessors | Complete | Remaining | Baseline start | Baseline finish | Baseline duration | Total slack | Free slack | Constraint | Resources | Work | Actual work | Cost | Baseline cost | Actual cost |
| --- | --- | --- | --- | --- | --- | --- | --- | --- | --- | --- | --- | --- | --- | --- | --- | --- | --- | --- | --- | --- | --- |
| 1 | 1 | **SICC** |  | 161d | 2017-03-16 A | 2017-10-26 |  | 9% | 147.25d | 2017-03-16 | 2017-10-26 | 161d | 0d |  |  |  | 2699.33h | 708.77h | 2,265,205.43 | 2,265,205.43 | 605,157.43 |
| 2 | 1.1 | **Fase Inicial** |  | 12d | 2017-03-16 A | 2017-03-31 |  | 99% | 0d | 2017-03-16 | 2017-03-31 | 12d | 149d |  | start no earlier than 2017-03-16 |  | 139.37h | 139.37h | 114,631.67 | 114,631.67 | 114,631.67 |
| 3 | 1.1.1 | Armar grupo de trabajo |  | 0.5d | 2017-03-16 A | 2017-03-23 A |  | 100% |  | 2017-03-16 | 2017-03-23 | 0.5d |  |  |  | PM [80%]; AF; ACA | 4.97h | 4.97h | 4,711.67 | 4,711.67 | 4,711.67 |
| 4 | 1.1.2 | Presentar entregables preliminares del proyecto (tres propuestas) |  | 6d | 2017-03-24 A | 2017-03-31 A | 3 | 100% |  | 2017-03-24 | 2017-03-31 | 6d |  |  | finish no earlier than 2017-03-23 | PM [80%]; AF; ACA | 134.4h | 134.4h | 109,920 | 109,920 | 109,920 |
| 5 | 1.1.3 | HITO: 3 Propuestas de Proyecto | milestone | 0d | 2017-03-31 | 2017-03-31 | 4 |  |  | 2017-03-31 | 2017-03-31 | 0d | 135d | 0d | start no earlier than 2017-03-24 |  |  |  |  |  |  |
| 6 | 1.2 | **Organización inicial (ANTEPROYECTO)** |  | 14d | 2017-04-03 A | 2017-04-20 A |  | 100% |  | 2017-04-03 | 2017-04-20 | 14d |  |  |  |  | 313.6h | 313.6h | 256,480 | 256,480 | 256,480 |
| 7 | 1.2.1 | Armar Acta de Proyecto |  | 14d | 2017-04-03 A | 2017-04-20 A | 5 | 100% |  | 2017-04-03 | 2017-04-20 | 14d |  |  | start no earlier than 2017-03-27 | PM [80%]; AF; ACA | 313.6h | 313.6h | 256,480 | 256,480 | 256,480 |
| 8 | 1.2.2 | HITO-Entregable:ACTA DE PROYECTO | milestone | 0d | 2017-04-14 A | 2017-04-14 A | 7 | 100% |  | 2017-04-14 | 2017-04-14 | 0d |  |  | start no earlier than 2017-04-14 |  |  |  |  |  |  |
| 9 | 1.3 | **Planificación general** |  | 89d | 2017-04-14 A | 2017-08-17 |  | 40% | 53.4d | 2017-04-14 | 2017-08-17 | 89d | 51d |  |  |  | 440.77h | 255.81h | 405,645.76 | 405,645.76 | 234,045.76 |
| 10 | 1.3.1 | **Gestion de Proyecto** |  | 32d | 2017-04-14 A | 2017-05-30 |  | 72% | 9.04d | 2017-04-14 | 2017-05-30 | 32d | 108d |  |  |  | 344.77h | 255.81h | 317,565.76 | 317,565.76 | 234,045.76 |
| 11 | 1.3.1.1 | Elaborar Plan de Gestión del Proyecto |  | 4d | 2017-04-14 A | 2017-04-19 A | 8 | 100% |  | 2017-04-14 | 2017-04-19 | 4d |  |  |  | PM [80%]; AF | 57.6h | 57.6h | 52,159.09 | 52,159.09 | 52,159.09 |
| 12 | 1.3.1.2 | Elaborar Plan de Recursos Humanos |  | 4d | 2017-04-20 A | 2017-04-25 A | 11 | 100% |  | 2017-04-20 | 2017-04-25 | 4d |  |  |  | PM [80%] | 25.6h | 25.6h | 25,600 | 25,600 | 25,600 |
| 13 | 1.3.1.3 | Elaborar Plan de Comunicaciones |  | 4d | 2017-04-26 A | 2017-05-01 A | 12 | 100% |  | 2017-04-26 | 2017-05-01 | 4d |  |  |  | PM [80%] | 25.6h | 25.6h | 25,600 | 25,600 | 25,600 |
| 14 | 1.3.1.4 | Elaborar Plan de Gestion de Riesgos |  | 4d | 2017-05-02 A | 2017-05-05 A | 13 | 100% |  | 2017-05-02 | 2017-05-05 | 4d |  |  |  | PM [80%]; AF; DBA | 89.6h | 89.6h | 78,720 | 78,720 | 78,720 |
| 15 | 1.3.1.5 | Elaborar Plan de Adquisición de Hardware |  | 1d | 2017-05-08 | 2017-05-08 | 14 |  |  | 2017-05-08 | 2017-05-08 | 1d | 1.6d | 0d |  | PM [80%]; AF; DBA | 22.4h |  | 19,680 | 19,680 |  |
| 16 | 1.3.1.6 | Elaborar Plan de Ejecución de Proyecto |  | 4d | 2017-05-09 A | 2017-05-12 | 15 | 40% | 2.4d | 2017-05-09 | 2017-05-12 | 4d | 118d | 0d |  | PM [80%] | 25.6h | 10.24h | 25,600 | 25,600 | 10,240 |
| 17 | 1.3.1.7 | Elaborar Plan de Capacitación para Equipo |  | 1d | 2017-05-15 | 2017-05-15 | 16 |  |  | 2017-05-15 | 2017-05-15 | 1d | 118d |  |  | PM [80%]; AF; DBA | 22.4h |  | 19,680 | 19,680 |  |
| 18 | 1.3.1.8 | Generar WBS |  | 3d | 2017-05-16 A | 2017-05-18 A | 17 | 100% |  | 2017-05-16 | 2017-05-18 | 3d |  |  |  | PM [80%]; AF [80%] | 27.87h | 27.87h | 24,602.67 | 24,602.67 | 24,602.67 |
| 19 | 1.3.1.9 | Generar Cronograma |  | 2d | 2017-05-19 A | 2017-05-22 A | 18 | 100% |  | 2017-05-19 | 2017-05-22 | 2d |  |  |  | PM [80%]; AF [80%] | 19.3h | 19.3h | 17,124 | 17,124 | 17,124 |
| 20 | 1.3.1.10 | Efectuar Estudio de Fact. Téc., Oper. y Económica |  | 4.5d | 2017-05-23 | 2017-05-29 | 19 |  |  | 2017-05-23 | 2017-05-29 | 4.5d | 6d | 0.5d |  | PM [80%] | 28.8h |  | 28,800 | 28,800 |  |
| 21 | 1.3.1.11 | HITO-Entregable: PLAN GENERAL DE PROYECTO - PLANES SUBSIDIARIOS Y ANEXOS (CPM - OTROS ENTREGABLES SEGÚN CARACTERÍSTICAS DEL PROYECTO) | milestone | 0d | 2017-05-30 | 2017-05-30 | 20 |  |  | 2017-05-30 | 2017-05-30 | 0d | 5.5d | 0d | start no earlier than 2017-05-30 |  |  |  |  |  |  |
| 22 | 1.3.2 | **Armado de Presentación Comercial y Poster** |  | 45.5d | 2017-06-14 | 2017-08-17 |  |  |  | 2017-06-14 | 2017-08-17 | 45.5d | 51d |  |  |  | 96h |  | 88,080 | 88,080 |  |
| 23 | 1.3.2.1 | Armar Diapositivas |  | 5d | 2017-06-14 | 2017-06-21 | 33 |  |  | 2017-06-14 | 2017-06-21 | 5d | 71.5d | 0d |  | PM [20%]; AF [20%] | 16h |  | 14,640 | 14,640 |  |
| 24 | 1.3.2.2 | Armar folletería, carpetas y/o material de apoyo |  | 5d | 2017-06-21 | 2017-06-28 | 23 |  |  | 2017-06-21 | 2017-06-28 | 5d | 71.5d | 0d |  | PM [20%]; AF [20%] | 16h |  | 14,640 | 14,640 |  |
| 25 | 1.3.2.3 | Armar Poster |  | 5d | 2017-06-28 | 2017-07-05 | 24 |  |  | 2017-06-28 | 2017-07-05 | 5d | 71.5d | 0d |  | PM [20%]; AF [20%] | 16h |  | 14,640 | 14,640 |  |
| 26 | 1.3.2.4 | Desarrollar la Presentación |  | 10d | 2017-07-05 | 2017-07-19 | 25 |  |  | 2017-07-05 | 2017-07-19 | 10d | 71.5d |  |  | PM [20%]; AF [20%]; ARQ [20%] | 48h |  | 44,160 | 44,160 |  |
| 27 | 1.3.2.5 | HITO-Entregable: Poster Comercial del Proyecto | milestone | 0d | 2017-07-13 | 2017-07-13 | 25 |  |  | 2017-07-13 | 2017-07-13 | 0d | 76d | 25d | start no earlier than 2017-07-13 |  |  |  |  |  |  |
| 28 | 1.3.2.6 | HITO-Entregable: PRESENTACIÓN Y OTROS DOCUMENTOS | milestone | 0d | 2017-08-17 | 2017-08-17 | 27 |  |  | 2017-08-17 | 2017-08-17 | 0d | 51d |  | start no earlier than 2017-08-17 |  |  |  |  |  |  |

| ID | WBS | Task | Type | Duration | Start | Finish | Predecessors | Baseline start | Baseline finish | Baseline duration | Total slack | Free slack | Constraint | Resources | Work | Cost | Baseline cost |
| --- | --- | --- | --- | --- | --- | --- | --- | --- | --- | --- | --- | --- | --- | --- | --- | --- | --- |
| 29 | 1.4 | **Ejecución del proyecto** |  | 97.94d | 2017-05-30 | 2017-10-12 |  | 2017-05-30 | 2017-10-12 | 97.94d | 6.5d |  |  |  | 1375.2h | 1,078,528 | 1,078,528 |
| 30 | 1.4.1 | Elaborar Especificacion de Requerimientos SW |  | 4d | 2017-05-30 | 2017-06-02 | 21 | 2017-05-30 | 2017-06-02 | 4d | 6.5d | 0d |  | AF; ARQ; ACA | 96h | 77,440 | 77,440 |
| 31 | 1.4.2 | Elaborar Especificacion de Casos de Uso |  | 4d | 2017-06-05 | 2017-06-08 | 30 | 2017-06-05 | 2017-06-08 | 4d | 100d |  | start no earlier than 2017-05-31 | AF; ARQ | 64h | 56,320 | 56,320 |
| 32 | 1.4.3 | Diseñar Arquitectura de Alto Nivel |  | 4d | 2017-06-05 | 2017-06-08 | 30 | 2017-06-05 | 2017-06-08 | 4d | 6.5d | 0d |  | AF; ARQ; ACA | 96h | 77,440 | 77,440 |
| 33 | 1.4.4 | Elaborar Documento Casos de Prueba |  | 3.5d | 2017-06-09 | 2017-06-14 | 32 | 2017-06-09 | 2017-06-14 | 3.5d | 6.5d | 0d |  | AF; ARQ; ACA | 84h | 67,760 | 67,760 |
| 34 | 1.4.5 | HITO: Documentacion Fase Inicial Ejecucion | milestone | 0d | 2017-06-14 | 2017-06-14 | 33 | 2017-06-14 | 2017-06-14 | 0d | 5.5d | 0d | start no earlier than 2017-05-25 |  |  |  |  |
| 35 | 1.4.6 | **Iteración - Integración Bluetooth - Móvil** |  | 56.44d | 2017-06-14 | 2017-08-31 | 34 | 2017-06-14 | 2017-08-31 | 56.44d | 1.06d |  |  |  | 555.2h | 427,488 | 427,488 |
| 36 | 1.4.6.1 | Diseño Detallado |  | 3d | 2017-06-14 | 2017-06-19 | 34 | 2017-06-14 | 2017-06-19 | 3d | 6.5d | 0d |  | AF [80%]; ARQ [80%]; DBA; ACA [80%] | 81.6h | 66,384 | 66,384 |
| 37 | 1.4.6.2 | Codificacion |  | 41d | 2017-06-19 | 2017-08-15 | 36 | 2017-06-19 | 2017-08-15 | 41d | 6.5d | 0d |  | PR | 328h | 249,280 | 249,280 |
| 38 | 1.4.6.3 | Pruebas de Integracion |  | 4d | 2017-08-15 | 2017-08-21 | 37 | 2017-08-15 | 2017-08-21 | 4d | 6.5d | 0d |  | PR; ACA | 64h | 45,440 | 45,440 |
| 39 | 1.4.6.4 | Pruebas Funcionales Prototipo |  | 3d | 2017-08-21 | 2017-08-24 | 38 | 2017-08-21 | 2017-08-24 | 3d | 6.5d | 5.44d |  | AF [80%]; DBA; ACA [80%]; ARQ [80%] | 81.6h | 66,384 | 66,384 |
| 40 | 1.4.6.5 | HITO: Prototipo Integración BT | milestone | 0d | 2017-08-31 | 2017-08-31 | 39 | 2017-08-31 | 2017-08-31 | 0d | 1.06d | 0d | start no earlier than 2017-08-31 |  |  |  |  |
| 41 | 1.4.7 | **Iteración Aplicación Web** |  | 11d | 2017-08-31 | 2017-09-15 | 40 | 2017-08-31 | 2017-09-15 | 11d | 1.06d |  |  |  | 216h | 169,040 | 169,040 |
| 42 | 1.4.7.1 | Diseño detallado |  | 3d | 2017-08-31 | 2017-09-05 | 40 | 2017-08-31 | 2017-09-05 | 3d | 0.06d | 0d |  | AF; ARQ; DBA; ACA | 96h | 78,000 | 78,000 |
| 43 | 1.4.7.2 | Codificacion |  | 5d | 2017-09-05 | 2017-09-12 | 42 | 2017-09-05 | 2017-09-12 | 5d | 0.06d | 0d |  | PR | 40h | 30,400 | 30,400 |
| 44 | 1.4.7.3 | Pruebas de Integracion |  | 1d | 2017-09-12 | 2017-09-13 | 43 | 2017-09-12 | 2017-09-13 | 1d | 0.06d | 0d |  | PR; ACA | 16h | 11,360 | 11,360 |
| 45 | 1.4.7.4 | Pruebas Funcionales |  | 2d | 2017-09-13 | 2017-09-15 | 44 | 2017-09-13 | 2017-09-15 | 2d | 0.06d | 0d |  | AF; DBA; PR; ACA | 64h | 49,280 | 49,280 |
| 46 | 1.4.7.5 | HITO: Prototipo Aplicación Movil | milestone | 0d | 2017-09-15 | 2017-09-15 | 45 | 2017-09-15 | 2017-09-15 | 0d | 0.06d | 0d | start no earlier than 2017-09-15 |  |  |  |  |
| 47 | 1.4.8 | **Iteración Aplicación Bluetooth - Móvil - Web** |  | 19d | 2017-09-15 | 2017-10-12 | 46 | 2017-09-15 | 2017-10-12 | 19d | 1.06d |  |  |  | 264h | 203,040 | 203,040 |
| 48 | 1.4.8.1 | Diseño detallado |  | 2d | 2017-09-15 | 2017-09-19 | 46 | 2017-09-15 | 2017-09-19 | 2d | 0.06d | 0d |  | AF; ARQ; DBA; ACA | 64h | 52,000 | 52,000 |
| 49 | 1.4.8.2 | Codificacion |  | 13d | 2017-09-19 | 2017-10-06 | 48 | 2017-09-19 | 2017-10-06 | 13d | 0.06d | 0d |  | PR | 104h | 79,040 | 79,040 |
| 50 | 1.4.8.3 | Pruebas de Integracion |  | 2d | 2017-10-06 | 2017-10-10 | 49 | 2017-10-06 | 2017-10-10 | 2d | 0.06d | 0d |  | PR; ACA | 32h | 22,720 | 22,720 |
| 51 | 1.4.8.4 | Pruebas Funcionales |  | 2d | 2017-10-10 | 2017-10-12 | 50 | 2017-10-10 | 2017-10-12 | 2d | 0.06d | 0d |  | AF; DBA; PR; ACA | 64h | 49,280 | 49,280 |
| 52 | 1.4.8.5 | HITO: Entrega de Producto Final funcional. | milestone | 0d | 2017-10-12 | 2017-10-12 | 51 | 2017-10-12 | 2017-10-12 | 0d | 0.06d | 0d | start no earlier than 2017-10-12 |  |  |  |  |
| 53 | 1.4.9 | HITO: Entregable Producto Final | milestone | 0d | 2017-10-12 | 2017-10-12 | 52, 39, 45 | 2017-10-12 | 2017-10-12 | 0d | 0.06d | 0d | start no earlier than 2017-10-12 |  |  |  |  |

| ID | WBS | Task | Type | Duration | Start | Finish | Predecessors | Baseline start | Baseline finish | Baseline duration | Total slack | Free slack | Constraint | Resources | Work | Cost | Baseline cost |
| --- | --- | --- | --- | --- | --- | --- | --- | --- | --- | --- | --- | --- | --- | --- | --- | --- | --- |
| 54 | 1.5 | **Finalización del Proyecto** |  | 9.06d | 2017-10-12 | 2017-10-26 |  | 2017-10-12 | 2017-10-26 | 9.06d | 1d |  |  |  | 172.8h | 152,320 | 152,320 |
| 55 | 1.5.1 | Realizar ajustes en la documentación final |  | 4d | 2017-10-12 | 2017-10-18 | 53 | 2017-10-12 | 2017-10-18 | 4d | 0.06d | 0d |  | PM [80%]; AF | 57.6h | 52,160 | 52,160 |
| 56 | 1.5.2 | Elaborar Informe Final Proyecto (Acta de Cierre/Lecciones Aprendidas) |  | 2d | 2017-10-18 | 2017-10-20 | 55 | 2017-10-18 | 2017-10-20 | 2d | 1.06d | 0d |  | PM [80%]; AF; ARQ | 44.8h | 40,960 | 40,960 |
| 57 | 1.5.3 | Generación de documentación usuario |  | 1d | 2017-10-20 | 2017-10-23 | 56 | 2017-10-20 | 2017-10-23 | 1d | 1.06d | 0d |  | AF; ARQ; ACA | 24h | 19,360 | 19,360 |
| 58 | 1.5.4 | Generación de documentación técnica |  | 1d | 2017-10-23 | 2017-10-24 | 57 | 2017-10-23 | 2017-10-24 | 1d | 1.06d | 0d |  | AF; ARQ; ACA | 24h | 19,360 | 19,360 |
| 59 | 1.5.5 | Hacer la presentación final del producto |  | 1d | 2017-10-24 | 2017-10-25 | 58 | 2017-10-24 | 2017-10-25 | 1d | 1.06d |  |  | PM [80%]; AF; ARQ | 22.4h | 20,480 | 20,480 |
| 60 | 1.5.6 | HITO-Entregable: CARPETA FINAL - PRODUCTO FINAL - ACTA DE CIERRE - LECCIONES APRENDIDAS | milestone | 0d | 2017-10-26 | 2017-10-26 | 58 | 2017-10-26 | 2017-10-26 | 0d | 1d |  | start no earlier than 2017-10-26 |  |  |  |  |
| 61 | 1.6 | **Seguimiento y Control del Proyecto** |  | 161d | 2017-03-16 | 2017-10-26 |  | 2017-03-16 | 2017-10-26 | 161d | 0d |  |  |  | 257.6h | 257,600 | 257,600 |
| 62 | 1.6.1 | Seguimiento y Control de Avance |  | 161d | 2017-03-16 | 2017-10-26 |  | 2017-03-16 | 2017-10-26 | 161d | 0d |  | finish no earlier than 2017-10-26 | PM [15%] | 193.2h | 193,200 | 193,200 |
| 63 | 1.6.2 | Minutas de Reunión |  | 161d | 2017-03-16 | 2017-10-26 |  | 2017-03-16 | 2017-10-26 | 161d | 0d |  | start no earlier than 2017-03-16 | PM [5%] | 64.4h | 64,400 | 64,400 |
| 64 | 1.6.3 | HITO-Entregable: INFORME DE AVANCE / MINUTAS DE REUNIÓN (en cada reunion de seguimiento) | milestone | 0d | 2017-10-26 | 2017-10-26 | 62, 63 | 2017-10-26 | 2017-10-26 | 0d | 0d |  | start no earlier than 2017-10-26 |  |  |  |  |
